# UASPE-TalentosEmpleo-Documentacion

Schedule from MS Project XML, 2015-10-01 to 2015-10-16, A marks actual dates.

## Calendars

- Estandar: Mon-Fri 08:00-12:00, 13:00-17:00; Sat-Sun off. Exceptions (off unless hours are given): 2015-10-12 (Day).

## Schedule

| ID | WBS | Task | Duration | Start | Finish | Predecessors | Remaining | Baseline 1 start | Baseline 1 finish | Total slack |
| --- | --- | --- | --- | --- | --- | --- | --- | --- | --- | --- |
| 1 | 1 | **Documentación Talentos para el Empleo** | 10.65d | 2015-10-01 08:00 A | 2015-10-16 14:12 |  | 10.65d | 2015-10-01 08:00 | 2015-10-16 14:12 | 0d |
| 2 | 1.1 | **Análisis** | 1.8d | 2015-10-02 08:24 A | 2015-10-05 15:48 |  | 1.8d | 2015-10-02 08:24 | 2015-10-05 15:48 | 0d |
| 3 | 1.1.1 | **Documentación de Requerimientos del proceso.** | 0.6d | 2015-10-02 08:24 A | 2015-10-02 14:12 |  | 0.6d | 2015-10-02 08:24 | 2015-10-02 14:12 | 0d |
| 4 | 1.1.1.1 | Preinscripción | 0.15d | 2015-10-02 08:24 A | 2015-10-02 09:36 | 26 | 0.15d | 2015-10-02 08:24 | 2015-10-02 09:36 | 0d |
| 5 | 1.1.1.2 | Matricula | 0.15d | 2015-10-02 09:36 A | 2015-10-02 10:48 | 4 | 0.15d | 2015-10-02 09:36 | 2015-10-02 10:48 | 0d |
| 6 | 1.1.1.3 | Seguimiento | 0.15d | 2015-10-02 10:48 A | 2015-10-02 12:00 | 5 | 0.15d | 2015-10-02 10:48 | 2015-10-02 12:00 | 0d |
| 7 | 1.1.1.4 | Cierre | 0.15d | 2015-10-02 13:00 A | 2015-10-02 14:12 | 6 | 0.15d | 2015-10-02 13:00 | 2015-10-02 14:12 | 0d |
| 8 | 1.1.2 | **Documentación de Diagramas de casos de uso.** | 0.6d | 2015-10-02 14:12 A | 2015-10-05 10:00 |  | 0.6d | 2015-10-02 14:12 | 2015-10-05 10:00 | 0d |
| 9 | 1.1.2.1 | Preinscripción | 0.15d | 2015-10-02 14:12 A | 2015-10-02 15:24 | 7 | 0.15d | 2015-10-02 14:12 | 2015-10-02 15:24 | 0d |
| 10 | 1.1.2.2 | Matricula | 0.15d | 2015-10-02 15:24 A | 2015-10-02 16:36 | 9 | 0.15d | 2015-10-02 15:24 | 2015-10-02 16:36 | 0d |
| 11 | 1.1.2.3 | Seguimiento | 0.15d | 2015-10-02 16:36 A | 2015-10-05 08:48 | 10 | 0.15d | 2015-10-02 16:36 | 2015-10-05 08:48 | 0d |
| 12 | 1.1.2.4 | Cierre | 0.15d | 2015-10-05 08:48 A | 2015-10-05 10:00 | 11 | 0.15d | 2015-10-05 08:48 | 2015-10-05 10:00 | 0d |
| 13 | 1.1.3 | **Documentación de Diagramas de flujo del proceso.** | 0.6d | 2015-10-05 10:00 A | 2015-10-05 15:48 |  | 0.6d | 2015-10-05 10:00 | 2015-10-05 15:48 | 0d |
| 14 | 1.1.3.1 | Preinscripción | 0.15d | 2015-10-05 10:00 A | 2015-10-05 11:12 | 12 | 0.15d | 2015-10-05 10:00 | 2015-10-05 11:12 | 0d |
| 15 | 1.1.3.2 | Matricula | 0.15d | 2015-10-05 11:12 A | 2015-10-05 13:24 | 14 | 0.15d | 2015-10-05 11:12 | 2015-10-05 13:24 | 0d |
| 16 | 1.1.3.3 | Seguimiento | 0.15d | 2015-10-05 13:24 A | 2015-10-05 14:36 | 15 | 0.15d | 2015-10-05 13:24 | 2015-10-05 14:36 | 0d |
| 17 | 1.1.3.4 | Cierre | 0.15d | 2015-10-05 14:36 A | 2015-10-05 15:48 | 16 | 0.15d | 2015-10-05 14:36 | 2015-10-05 15:48 | 0d |
| 18 | 1.2 | **Diseño** | 3.9d | 2015-10-01 08:00 A | 2015-10-06 16:12 |  | 3.9d | 2015-10-01 08:00 | 2015-10-06 16:12 | 0d |
| 19 | 1.2.1 | **Documentación de Modelo de base de datos.** | 1.05d | 2015-10-01 08:00 A | 2015-10-02 08:24 |  | 1.05d | 2015-10-01 08:00 | 2015-10-02 08:24 | 0d |
| 20 | 1.2.1.1 | Proyecto | 0.15d | 2015-10-01 08:00 A | 2015-10-01 09:12 |  | 0.15d | 2015-10-01 08:00 | 2015-10-01 09:12 | 0d |
| 21 | 1.2.1.2 | Institución | 0.15d | 2015-10-01 09:12 A | 2015-10-01 10:24 | 20 | 0.15d | 2015-10-01 09:12 | 2015-10-01 10:24 | 0d |
| 22 | 1.2.1.3 | Paquete | 0.15d | 2015-10-01 10:24 A | 2015-10-01 11:36 | 21 | 0.15d | 2015-10-01 10:24 | 2015-10-01 11:36 | 0d |
| 23 | 1.2.1.4 | Beneficiario | 0.15d | 2015-10-01 11:36 A | 2015-10-01 13:48 | 22 | 0.15d | 2015-10-01 11:36 | 2015-10-01 13:48 | 0d |
| 24 | 1.2.1.5 | Soportes y Novedades Beneficiario | 0.15d | 2015-10-01 13:48 A | 2015-10-01 15:00 | 23 | 0.15d | 2015-10-01 13:48 | 2015-10-01 15:00 | 0d |
| 25 | 1.2.1.6 | Seguimiento | 0.15d | 2015-10-01 15:00 A | 2015-10-01 16:12 | 24 | 0.15d | 2015-10-01 15:00 | 2015-10-01 16:12 | 0d |
| 26 | 1.2.1.7 | Cierre | 0.15d | 2015-10-01 16:12 A | 2015-10-02 08:24 | 25 | 0.15d | 2015-10-01 16:12 | 2015-10-02 08:24 | 0d |

| ID | WBS | Task | Duration | Start | Finish | Predecessors | Remaining | Baseline 1 start | Baseline 1 finish | Total slack |
| --- | --- | --- | --- | --- | --- | --- | --- | --- | --- | --- |
| 27 | 1.2.2 | **Documentación de interfaces.** | 1.05d | 2015-10-05 15:48 A | 2015-10-06 16:12 |  | 1.05d | 2015-10-05 15:48 | 2015-10-06 16:12 | 0d |
| 28 | 1.2.2.1 | Proyecto | 0.15d | 2015-10-05 15:48 A | 2015-10-05 17:00 | 17 | 0.15d | 2015-10-05 15:48 | 2015-10-05 17:00 | 0d |
| 29 | 1.2.2.2 | Institución | 0.15d | 2015-10-06 08:00 A | 2015-10-06 09:12 | 28 | 0.15d | 2015-10-06 08:00 | 2015-10-06 09:12 | 0d |
| 30 | 1.2.2.3 | Paquete | 0.15d | 2015-10-06 09:12 A | 2015-10-06 10:24 | 29 | 0.15d | 2015-10-06 09:12 | 2015-10-06 10:24 | 0d |
| 31 | 1.2.2.4 | Beneficiario | 0.15d | 2015-10-06 10:24 A | 2015-10-06 11:36 | 30 | 0.15d | 2015-10-06 10:24 | 2015-10-06 11:36 | 0d |
| 32 | 1.2.2.5 | Soportes y Novedades Beneficiario | 0.15d | 2015-10-06 11:36 A | 2015-10-06 13:48 | 31 | 0.15d | 2015-10-06 11:36 | 2015-10-06 13:48 | 0d |
| 33 | 1.2.2.6 | Seguimiento | 0.15d | 2015-10-06 13:48 A | 2015-10-06 15:00 | 32 | 0.15d | 2015-10-06 13:48 | 2015-10-06 15:00 | 0d |
| 34 | 1.2.2.7 | Cierre | 0.15d | 2015-10-06 15:00 A | 2015-10-06 16:12 | 33 | 0.15d | 2015-10-06 15:00 | 2015-10-06 16:12 | 0d |
| 35 | 1.3 | **Desarrollo** | 1.05d | 2015-10-06 16:12 A | 2015-10-07 16:36 |  | 1.05d | 2015-10-06 16:12 | 2015-10-07 16:36 | 0d |
| 36 | 1.3.1 | **Documentación de manual de usuario.** | 1.05d | 2015-10-06 16:12 A | 2015-10-07 16:36 |  | 1.05d | 2015-10-06 16:12 | 2015-10-07 16:36 | 0d |
| 37 | 1.3.1.1 | Proyecto | 0.15d | 2015-10-06 16:12 A | 2015-10-07 08:24 | 34 | 0.15d | 2015-10-06 16:12 | 2015-10-07 08:24 | 0d |
| 38 | 1.3.1.2 | Institución | 0.15d | 2015-10-07 08:24 A | 2015-10-07 09:36 | 37 | 0.15d | 2015-10-07 08:24 | 2015-10-07 09:36 | 0d |
| 39 | 1.3.1.3 | Paquete | 0.15d | 2015-10-07 09:36 A | 2015-10-07 10:48 | 38 | 0.15d | 2015-10-07 09:36 | 2015-10-07 10:48 | 0d |
| 40 | 1.3.1.4 | Beneficiario | 0.15d | 2015-10-07 10:48 A | 2015-10-07 12:00 | 39 | 0.15d | 2015-10-07 10:48 | 2015-10-07 12:00 | 0d |
| 41 | 1.3.1.5 | Soportes y Novedades Beneficiario | 0.15d | 2015-10-07 13:00 A | 2015-10-07 14:12 | 40 | 0.15d | 2015-10-07 13:00 | 2015-10-07 14:12 | 0d |
| 42 | 1.3.1.6 | Seguimiento | 0.15d | 2015-10-07 14:12 A | 2015-10-07 15:24 | 41 | 0.15d | 2015-10-07 14:12 | 2015-10-07 15:24 | 0d |
| 43 | 1.3.1.7 | Cierre | 0.15d | 2015-10-07 15:24 A | 2015-10-07 16:36 | 42 | 0.15d | 2015-10-07 15:24 | 2015-10-07 16:36 | 0d |
| 44 | 1.4 | **Pruebas** | 3.6d | 2015-10-07 16:36 A | 2015-10-14 13:24 |  | 3.6d | 2015-10-07 16:36 | 2015-10-14 13:24 | 0d |
| 45 | 1.4.1 | **Documentación de solicitud de pruebas.** | 3.6d | 2015-10-07 16:36 A | 2015-10-14 13:24 |  | 3.6d | 2015-10-07 16:36 | 2015-10-14 13:24 | 0d |
| 46 | 1.4.1.1 | Solicitud de Pruebas 0001 | 0.15d | 2015-10-07 16:36 A | 2015-10-08 08:48 | 43 | 0.15d | 2015-10-07 16:36 | 2015-10-08 08:48 | 0d |
| 47 | 1.4.1.2 | Solicitud de Pruebas 0002 | 0.15d | 2015-10-08 08:48 A | 2015-10-08 10:00 | 46 | 0.15d | 2015-10-08 08:48 | 2015-10-08 10:00 | 0d |
| 48 | 1.4.1.3 | Solicitud de Pruebas 0003 | 0.15d | 2015-10-08 10:00 A | 2015-10-08 11:12 | 47 | 0.15d | 2015-10-08 10:00 | 2015-10-08 11:12 | 0d |
| 49 | 1.4.1.4 | Solicitud de Pruebas 0004 | 0.15d | 2015-10-08 11:12 A | 2015-10-08 13:24 | 48 | 0.15d | 2015-10-08 11:12 | 2015-10-08 13:24 | 0d |
| 50 | 1.4.1.5 | Solicitud de Pruebas 0005 | 0.15d | 2015-10-08 13:24 A | 2015-10-08 14:36 | 49 | 0.15d | 2015-10-08 13:24 | 2015-10-08 14:36 | 0d |
| 51 | 1.4.1.6 | Solicitud de Pruebas 0006 | 0.15d | 2015-10-08 14:36 A | 2015-10-08 15:48 | 50 | 0.15d | 2015-10-08 14:36 | 2015-10-08 15:48 | 0d |
| 52 | 1.4.1.7 | Solicitud de Pruebas 0007 | 0.15d | 2015-10-08 15:48 A | 2015-10-08 17:00 | 51 | 0.15d | 2015-10-08 15:48 | 2015-10-08 17:00 | 0d |
| 53 | 1.4.1.8 | Solicitud de Pruebas 0008 | 0.15d | 2015-10-09 08:00 A | 2015-10-09 09:12 | 52 | 0.15d | 2015-10-09 08:00 | 2015-10-09 09:12 | 0d |
| 54 | 1.4.1.9 | Solicitud de Pruebas 0009 | 0.15d | 2015-10-09 09:12 A | 2015-10-09 10:24 | 53 | 0.15d | 2015-10-09 09:12 | 2015-10-09 10:24 | 0d |
| 55 | 1.4.1.10 | Solicitud de Pruebas 0010 | 0.15d | 2015-10-09 10:24 A | 2015-10-09 11:36 | 54 | 0.15d | 2015-10-09 10:24 | 2015-10-09 11:36 | 0d |
| 56 | 1.4.1.11 | Solicitud de Pruebas 0011 | 0.15d | 2015-10-09 11:36 A | 2015-10-09 13:48 | 55 | 0.15d | 2015-10-09 11:36 | 2015-10-09 13:48 | 0d |
| 57 | 1.4.1.12 | Solicitud de Pruebas 0012 | 0.15d | 2015-10-09 13:48 A | 2015-10-09 15:00 | 56 | 0.15d | 2015-10-09 13:48 | 2015-10-09 15:00 | 0d |
| 58 | 1.4.1.13 | Solicitud de Pruebas 0013 | 0.15d | 2015-10-09 15:00 A | 2015-10-09 16:12 | 57 | 0.15d | 2015-10-09 15:00 | 2015-10-09 16:12 | 0d |
| 59 | 1.4.1.14 | Solicitud de Pruebas 0014 | 0.15d | 2015-10-09 16:12 A | 2015-10-13 08:24 | 58 | 0.15d | 2015-10-09 16:12 | 2015-10-13 08:24 | 0d |
| 60 | 1.4.1.15 | Solicitud de Pruebas 0015 | 0.15d | 2015-10-13 08:24 A | 2015-10-13 09:36 | 59 | 0.15d | 2015-10-13 08:24 | 2015-10-13 09:36 | 0d |
| 61 | 1.4.1.16 | Solicitud de Pruebas 0016 | 0.15d | 2015-10-13 09:36 A | 2015-10-13 10:48 | 60 | 0.15d | 2015-10-13 09:36 | 2015-10-13 10:48 | 0d |
| 62 | 1.4.1.17 | Solicitud de Pruebas 0017 | 0.15d | 2015-10-13 10:48 A | 2015-10-13 12:00 | 61 | 0.15d | 2015-10-13 10:48 | 2015-10-13 12:00 | 0d |
| 63 | 1.4.1.18 | Solicitud de Pruebas 0018 | 0.15d | 2015-10-13 13:00 A | 2015-10-13 14:12 | 62 | 0.15d | 2015-10-13 13:00 | 2015-10-13 14:12 | 0d |
| 64 | 1.4.1.19 | Solicitud de Pruebas 0019 | 0.15d | 2015-10-13 14:12 A | 2015-10-13 15:24 | 63 | 0.15d | 2015-10-13 14:12 | 2015-10-13 15:24 | 0d |
| 65 | 1.4.1.20 | Solicitud de Pruebas 0020 | 0.15d | 2015-10-13 15:24 A | 2015-10-13 16:36 | 64 | 0.15d | 2015-10-13 15:24 | 2015-10-13 16:36 | 0d |
| 66 | 1.4.1.21 | Solicitud de Pruebas 0021 | 0.15d | 2015-10-13 16:36 A | 2015-10-14 08:48 | 65 | 0.15d | 2015-10-13 16:36 | 2015-10-14 08:48 | 0d |
| 67 | 1.4.1.22 | Solicitud de Pruebas 0022 | 0.15d | 2015-10-14 08:48 A | 2015-10-14 10:00 | 66 | 0.15d | 2015-10-14 08:48 | 2015-10-14 10:00 | 0d |
| 68 | 1.4.1.23 | Solicitud de Pruebas 0023 | 0.15d | 2015-10-14 10:00 A | 2015-10-14 11:12 | 67 | 0.15d | 2015-10-14 10:00 | 2015-10-14 11:12 | 0d |
| 69 | 1.4.1.24 | Solicitud de Pruebas 0024 | 0.15d | 2015-10-14 11:12 A | 2015-10-14 13:24 | 68 | 0.15d | 2015-10-14 11:12 | 2015-10-14 13:24 | 0d |

| ID | WBS | Task | Duration | Start | Finish | Predecessors | Remaining | Baseline 1 start | Baseline 1 finish | Total slack |
| --- | --- | --- | --- | --- | --- | --- | --- | --- | --- | --- |
| 70 | 1.5 | **Implementación** | 2.1d | 2015-10-14 13:24 A | 2015-10-16 14:12 |  | 2.1d | 2015-10-14 13:24 | 2015-10-16 14:12 | 0d |
| 71 | 1.5.1 | **Documentación paso a paso de puesta en producción.** | 2.1d | 2015-10-14 13:24 A | 2015-10-16 14:12 |  | 2.1d | 2015-10-14 13:24 | 2015-10-16 14:12 | 0d |
| 72 | 1.5.1.1 | Versión 0001 | 0.15d | 2015-10-14 13:24 A | 2015-10-14 14:36 | 69 | 0.15d | 2015-10-14 13:24 | 2015-10-14 14:36 | 0d |
| 73 | 1.5.1.2 | Versión 0002 | 0.15d | 2015-10-14 14:36 A | 2015-10-14 15:48 | 72 | 0.15d | 2015-10-14 14:36 | 2015-10-14 15:48 | 0d |
| 74 | 1.5.1.3 | Versión 0003 | 0.15d | 2015-10-14 15:48 A | 2015-10-14 17:00 | 73 | 0.15d | 2015-10-14 15:48 | 2015-10-14 17:00 | 0d |
| 75 | 1.5.1.4 | Versión 0004 | 0.15d | 2015-10-15 08:00 A | 2015-10-15 09:12 | 74 | 0.15d | 2015-10-15 08:00 | 2015-10-15 09:12 | 0d |
| 76 | 1.5.1.5 | Versión 0005 | 0.15d | 2015-10-15 09:12 A | 2015-10-15 10:24 | 75 | 0.15d | 2015-10-15 09:12 | 2015-10-15 10:24 | 0d |
| 77 | 1.5.1.6 | Versión 0006 | 0.15d | 2015-10-15 10:24 A | 2015-10-15 11:36 | 76 | 0.15d | 2015-10-15 10:24 | 2015-10-15 11:36 | 0d |
| 78 | 1.5.1.7 | Versión 0007 | 0.15d | 2015-10-15 11:36 A | 2015-10-15 13:48 | 77 | 0.15d | 2015-10-15 11:36 | 2015-10-15 13:48 | 0d |
| 79 | 1.5.1.8 | Versión 0008 | 0.15d | 2015-10-15 13:48 A | 2015-10-15 15:00 | 78 | 0.15d | 2015-10-15 13:48 | 2015-10-15 15:00 | 0d |
| 80 | 1.5.1.9 | Versión 0009 | 0.15d | 2015-10-15 15:00 A | 2015-10-15 16:12 | 79 | 0.15d | 2015-10-15 15:00 | 2015-10-15 16:12 | 0d |
| 81 | 1.5.1.10 | Versión 0010 | 0.15d | 2015-10-15 16:12 A | 2015-10-16 08:24 | 80 | 0.15d | 2015-10-15 16:12 | 2015-10-16 08:24 | 0d |
| 82 | 1.5.1.11 | Versión 0011 | 0.15d | 2015-10-16 08:24 A | 2015-10-16 09:36 | 81 | 0.15d | 2015-10-16 08:24 | 2015-10-16 09:36 | 0d |
| 83 | 1.5.1.12 | Versión 0012 | 0.15d | 2015-10-16 09:36 A | 2015-10-16 10:48 | 82 | 0.15d | 2015-10-16 09:36 | 2015-10-16 10:48 | 0d |
| 84 | 1.5.1.13 | Versión 0013 | 0.15d | 2015-10-16 10:48 A | 2015-10-16 12:00 | 83 | 0.15d | 2015-10-16 10:48 | 2015-10-16 12:00 | 0d |
| 85 | 1.5.1.14 | Versión 0014 | 0.15d | 2015-10-16 13:00 A | 2015-10-16 14:12 | 84 | 0.15d | 2015-10-16 13:00 | 2015-10-16 14:12 | 0d |
